# Proyecto TSL-2627 TuSuper en Línea

How a schedule from MS Project changed from version to version. A marks actual dates.

## Version 1 (saved 2026-10-31)

Note of the change: (WIP) Project v1.1

| ID | WBS | Task | Duration | Start | Finish | Predecessors | Total float | Constraint |
| --- | --- | --- | --- | --- | --- | --- | --- | --- |
| 1 | 1 | **TSL-2627 TuSuper en Línea** | 84d? | 2026-10-05 | 2027-02-12 |  | 0d |  |
| 2 | 1.1 | **Dirección del Proyecto** | 84d? | 2026-10-05 | 2027-02-12 |  | 0d |  |
| 3 | 1.1.1 | **Planificación y gestión de la planificación** | 2d? | 2026-10-05 | 2026-10-06 |  | 24d |  |
| 4 |  | Comienzo del Proyecto | 0d | 2026-10-05 | 2026-10-05 |  | 24d |  |
| 5 |  | Elaboración del Plan de Dirección del Proyecto, Alcance, EDT y Cronograma | 1d? | 2026-10-05 | 2026-10-05 | 4 | 24d |  |
| 6 |  | Tramitación y negociación de la aceptación del calendario y alcance por el cliente | 1d | 2026-10-06 | 2026-10-06 | 5 | 24d |  |
| 7 | 1.1.2 | **Dirección y seguimiento del Sprint 1** | 10d | 2026-11-09 | 2026-11-20 |  | 2d |  |
| 8 |  | Inicio del Sprint 1 | 0d | 2026-11-09 | 2026-11-09 | 6 | 2d | start no earlier than 2026-11-09 |
| 9 |  | Dirección y seguimiento del Sprint 1 | 10d | 2026-11-09 | 2026-11-20 | 8 | 2d |  |
| 10 | 1.1.3 | **Dirección y seguimiento del Sprint 2** | 10d | 2026-11-23 | 2026-12-04 |  | 2d |  |
| 11 |  | Inicio Sprint 2 | 0d | 2026-11-23 | 2026-11-23 | 9 | 2d | start no earlier than 2026-11-23 |
| 12 |  | Dirección y seguimiento del Sprint 2 | 10d | 2026-11-23 | 2026-12-04 | 11 | 2d |  |
| 13 | 1.1.4 | **Dirección y seguimiento del Sprint 3** | 9d | 2026-12-07 | 2026-12-18 |  | 2d |  |
| 14 |  | Inicio Sprint 3 | 0d | 2026-12-07 | 2026-12-07 | 12 | 2d | start no earlier than 2026-12-07 |
| 15 |  | Dirección y seguimiento del Sprint 3 | 9d | 2026-12-07 | 2026-12-18 | 14 | 2d |  |
| 16 | 1.1.5 | **Dirección y seguimiento del Sprint 4** | 7d | 2026-12-21 | 2027-01-08 |  | 2d |  |
| 17 |  | Inicio Sprint 4 | 0d | 2026-12-21 | 2026-12-21 | 15 | 2d | start no earlier than 2026-12-21 |
| 18 |  | Dirección y seguimiento del Sprint 4 | 7d | 2026-12-21 | 2027-01-08 | 17 | 2d |  |
| 19 | 1.1.6 | **Dirección y seguimiento del Sprint 5** | 10d | 2027-01-11 | 2027-01-22 |  | 2d |  |
| 20 |  | Inicio Sprint 5 | 0d | 2027-01-11 | 2027-01-11 | 18 | 2d | start no earlier than 2027-01-11 |
| 21 |  | Dirección y seguimiento del Sprint 5 | 10d | 2027-01-11 | 2027-01-22 | 20 | 2d |  |
| 22 | 1.1.7 | **Dirección y seguimiento del Sprint 6** | 10d | 2027-01-25 | 2027-02-05 |  | 2d |  |
| 23 |  | Inicio Sprint 6 | 0d | 2027-01-25 | 2027-01-25 | 21 | 2d | start no earlier than 2027-01-25 |
| 24 |  | Dirección y seguimiento del Sprint 6 | 10d | 2027-01-25 | 2027-02-05 | 23 | 2d |  |
| 25 | 1.1.8 | **Traspaso al servicio de mantenimiento completado** | 1d | 2027-02-08 | 2027-02-08 |  | 3d |  |
| 26 |  | Traspaso al servicio de mantenimiento completado | 1d | 2027-02-08 | 2027-02-08 | 24 | 3d |  |
| 27 | 1.1.9 | **Cierre del proyecto aprobado y completado** | 4d? | 2027-02-08 | 2027-02-12 |  | 0d |  |
| 28 |  | Elaboración del Informe de Cierre y Lecciones Aprendidas | 1d | 2027-02-08 | 2027-02-08 | 24 | 2d |  |
| 29 |  | Cierre del proyecto aprobado y completado | 1d? | 2027-02-09 | 2027-02-09 | 28 | 2d |  |
| 30 |  | Cierre del proyecto | 0d | 2027-02-12 | 2027-02-12 | 29 | 0d | start no earlier than 2027-02-12 |
| 31 | 1.2 | **Adquisiciones** | 1d? | 2026-10-05 | 2026-10-05 |  | 83d |  |
| 32 | 1.2.1 | **Contrato del conector con ERP: pedido, seguimiento y aceptación** | 1d? | 2026-10-05 | 2026-10-05 |  | 83d |  |
| 33 |  | Pedido del conector ERP tramitado | 1d? | 2026-10-05 | 2026-10-05 |  | 83d |  |
| 34 |  | Seguimiento del proveedor del conector | 1d? | 2026-10-05 | 2026-10-05 |  | 83d |  |
| 35 |  | Conector recibido y aceptado formalmente | 1d? | 2026-10-05 | 2026-10-05 |  | 83d |  |
| 36 |  | Pago del control del conector HITO (TDB) | 1d? | 2026-10-05 | 2026-10-05 |  | 83d |  |
| 37 | 1.2.2 | **Encargo de documentación de uso y formación: seguimiento y aceptación** | 1d? | 2026-10-05 | 2026-10-05 |  | 83d |  |
| 38 |  | Encargo de documentación y formación realizado | 1d? | 2026-10-05 | 2026-10-05 |  | 83d |  |
| 39 |  | Documentación entregada y acceso a preproducción habilitado para Formación | 1d? | 2026-10-05 | 2026-10-05 |  | 83d |  |
| 40 | 1.3 | **Integración con ERP · ENT-02** | 30d? | 2026-11-09 | 2026-12-21 |  | 30d |  |
| 41 | 1.3.1 | **Sprint 1 · Especificación de interfaz ERP acordada (EP-04)** | 1d? | 2026-11-09 | 2026-11-09 |  | 59d |  |
| 42 |  | Sprint 1 · Especificación de interfaz ERP acordada (EP-04) | 1d? | 2026-11-09 | 2026-11-09 | 8 | 59d |  |
| 43 | 1.3.2 | **Sprint 2 · Adaptación propia y ensayos con datos simulados (EP-04)** | 1d? | 2026-11-23 | 2026-11-23 |  | 49d |  |
| 44 |  | Sprint 2 · Adaptación propia y ensayos con datos simulados (EP-04) | 1d? | 2026-11-23 | 2026-11-23 | 11 | 49d |  |
| 45 | 1.3.3 | **Sprint 3 · Conector integrado, carga inicial y pruebas reales completadas (EP-04)** | 1d? | 2026-12-07 | 2026-12-07 |  | 39d |  |
| 46 |  | Sprint 3 · Conector integrado, carga inicial y pruebas reales completadas (EP-04) | 1d? | 2026-12-07 | 2026-12-07 | 14 | 39d |  |
| 47 | 1.3.4 | **Sprint 4 · Sincronización comprobada y carga productiva de 32 tiendas (EP-04)** | 1d? | 2026-12-21 | 2026-12-21 |  | 30d |  |
| 48 |  | Sprint 4 · Sincronización comprobada y carga productiva de 32 tiendas (EP-04) | 1d? | 2026-12-21 | 2026-12-21 | 17 | 30d |  |
| 49 | 1.4 | **Puesta en producción · ENT-03** | 38d? | 2026-11-23 | 2027-01-26 |  | 12d |  |
| 50 | 1.4.1 | **Sprint 2 · Entorno de preproducción preparado (EP-06)** | 1d? | 2026-11-23 | 2026-11-23 |  | 49d |  |
| 51 |  | Sprint 2 · Entorno de preproducción preparado (EP-06) | 1d? | 2026-11-23 | 2026-11-23 | 11 | 49d |  |
| 52 | 1.4.2 | **Sprint 4 · Despliegue de la plataforma en tres tiendas piloto (EP-06)** | 1d? | 2026-12-07 | 2026-12-07 |  | 39d |  |
| 53 |  | Sprint 4 · Despliegue de la plataforma en tres tiendas piloto (EP-06) | 1d? | 2026-12-07 | 2026-12-07 | 14 | 39d |  |
| 54 | 1.4.3 | **Sprint 5 · Piloto operativo y supervisado: primer tramo (EP-06)** | 1d? | 2027-01-11 | 2027-01-11 |  | 23d |  |
| 55 |  | Sprint 5 · Piloto operativo y supervisado: primer tramo (EP-06) | 1d? | 2027-01-11 | 2027-01-11 | 20 | 23d |  |
| 56 | 1.4.4 | **Sprint 6 · 25/01–05/02/2027** | 2d? | 2027-01-25 | 2027-01-26 |  | 12d |  |
| 57 | 1.4.4.1 | **Piloto operativo finalizado: segundo tramo (EP-06)** | 1d? | 2027-01-25 | 2027-01-25 |  | 12d |  |
| 58 |  | Piloto operativo finalizado: segundo tramo (EP-06) | 1d? | 2027-01-25 | 2027-01-25 | 23 | 12d |  |
| 59 | 1.4.4.2 | **Despliegue en producción y apertura de las 32 tiendas (EP-06)** | 1d? | 2027-01-26 | 2027-01-26 |  | 12d |  |
| 60 |  | Despliegue en producción y apertura de las 32 tiendas (EP-06) | 1d? | 2027-01-26 | 2027-01-26 | 58 | 12d |  |
| 61 | 1.5 | **Documentación y formación · ENT-04** | 2d? | 2026-12-07 | 2026-12-09 |  | 38d |  |
| 62 | 1.5.1 | **Sprint 3 · Documentación técnica y funcional entregada a Formación (EP-07)** | 1d? | 2026-12-07 | 2026-12-07 |  | 38d |  |
| 63 |  | Sprint 3 · Documentación técnica y funcional entregada a Formación (EP-07) | 1d? | 2026-12-07 | 2026-12-07 | 14 | 38d |  |
| 64 | 1.5.2 | **Sprint 3 · Acceso a preproducción habilitado para Formación (EP-07)** | 1d? | 2026-12-09 | 2026-12-09 |  | 38d |  |
| 65 |  | Sprint 3 · Acceso a preproducción habilitado para Formación (EP-07) | 1d? | 2026-12-09 | 2026-12-09 | 63 | 38d |  |
| 66 | 1.6 | **Plataforma de compra en línea · ENT-01** | 71d? | 2026-10-05 | 2027-01-25 |  | 13d |  |
| 67 | 1.6.1 | **Planificación** | 3d? | 2026-11-09 | 2026-11-11 |  | 56d |  |
| 68 | 1.6.1.1 | **Especificación funcional común y criterios de aceptación acordados (EP-01)** | 1d | 2026-11-09 | 2026-11-09 |  | 56d |  |
| 69 |  | Especificación funcional común y criterios de aceptación acordados (EP-01) | 1d | 2026-11-09 | 2026-11-09 | 8 | 56d |  |
| 70 | 1.6.1.2 | **Sistema de diseño e interfaz común preparados (EP-02)** | 1d? | 2026-11-10 | 2026-11-10 |  | 56d |  |

| ID | WBS | Task | Duration | Start | Finish | Predecessors | Total float |
| --- | --- | --- | --- | --- | --- | --- | --- |
| 71 |  | Sistema de diseño e interfaz común preparados (EP-02) | 1d? | 2026-11-10 | 2026-11-10 | 69 | 56d |
| 72 | 1.6.1.3 | **Arquitectura técnica de la plataforma diseñada (EP-03)** | 1d? | 2026-11-11 | 2026-11-11 |  | 56d |
| 73 |  | Arquitectura técnica de la plataforma diseñada (EP-03) | 1d? | 2026-11-11 | 2026-11-11 | 71 | 56d |
| 74 | 1.6.2 | **Sprint 1 · 09-20/11/2026** | 3d? | 2026-11-10 | 2026-11-12 |  | 56d |
| 75 | 1.6.2.1 | **RF-01 y RF-03 especificados y diseñados (E)** | 1d? | 2026-11-10 | 2026-11-10 |  | 57d |
| 76 |  | RF-01 y RF-03 especificados y diseñados | 1d? | 2026-11-10 | 2026-11-10 | 69, 8 | 57d |
| 77 | 1.6.2.2 | **RF-06 especificado y diseñado (E)** | 1d? | 2026-11-10 | 2026-11-10 |  | 56d |
| 78 |  | RF-06 especificado y diseñado | 1d? | 2026-11-10 | 2026-11-10 | 68 | 56d |
| 79 | 1.6.2.3 | **Entornos de desarrollo y CI/CD operativos (EP-03)** | 1d? | 2026-11-12 | 2026-11-12 |  | 56d |
| 80 |  | Entornos de desarrollo y CI/CD operativos (EP-03) | 1d? | 2026-11-12 | 2026-11-12 | 72 | 56d |
| 81 | 1.6.3 | **Sprint 2 · 23/11-04/12/2026** | 35d? | 2026-10-05 | 2026-11-23 |  | 49d |
| 82 | 1.6.3.1 | **RF-01 y RF-03 construidos e integrados (C)** | 1d? | 2026-11-23 | 2026-11-23 |  | 49d |
| 83 |  | RF-01 y RF-03 construidos e integrados | 1d? | 2026-11-23 | 2026-11-23 | 76, 11 | 49d |
| 84 | 1.6.3.2 | **RF-02 y RF-04 especificados y diseñados (E)** | 1d? | 2026-10-05 | 2026-10-05 |  | 82d |
| 85 |  | RF-02 y RF-04 especificados y diseñados | 1d? | 2026-10-05 | 2026-10-05 |  | 82d |
| 86 | 1.6.3.3 | **RF-06 construido e integrado (C)** | 1d? | 2026-11-11 | 2026-11-11 |  | 56d |
| 87 |  | RF-06 construido e integrado | 1d? | 2026-11-11 | 2026-11-11 | 78 | 56d |
| 88 | 1.6.3.4 | **RF-05 y RF-07 especificados y diseñados (E)** | 1d? | 2026-10-05 | 2026-10-05 |  | 81d |
| 89 |  | RF-05 y RF-07 especificados y diseñados | 1d? | 2026-10-05 | 2026-10-05 |  | 81d |
| 90 | 1.6.4 | **Sprint 3 · 07-18/12/2026** | 45d? | 2026-10-05 | 2026-12-07 |  | 39d |
| 91 | 1.6.4.1 | **RF-01 verificado (V)** | 1d? | 2026-12-07 | 2026-12-07 |  | 39d |
| 92 |  | RF-01 verificado (V) | 1d? | 2026-12-07 | 2026-12-07 | 14 | 39d |
| 93 | 1.6.4.2 | **RF-04 construido e integrado (C)** | 1d? | 2026-10-06 | 2026-10-06 |  | 82d |
| 94 |  | RF-04 construido e integrado | 1d? | 2026-10-06 | 2026-10-06 | 85 | 82d |
| 95 | 1.6.4.3 | **RF-05 construido e integrado (C)** | 1d? | 2026-10-06 | 2026-10-06 |  | 81d |
| 96 |  | RF-05 construido e integrado | 1d? | 2026-10-06 | 2026-10-06 | 89 | 81d |
| 97 | 1.6.4.4 | **RF-08 especificado y diseñado (E)** | 1d? | 2026-10-05 | 2026-10-05 |  | 82d |
| 98 |  | RF-08 especificado y diseñado | 1d? | 2026-10-05 | 2026-10-05 |  | 82d |
| 99 | 1.6.4.5 | **Plan y escenarios de pruebas de sistema preparados (EP-05)** | 1d? | 2026-10-05 | 2026-10-05 |  | 80d |
| 100 |  | Plan y escenarios de pruebas de sistema preparados (EP-05) | 1d? | 2026-10-05 | 2026-10-05 |  | 80d |
| 101 | 1.6.5 | **Sprint 4 · 21/12/2026–08/01/2027** | 53d? | 2026-10-06 | 2026-12-21 |  | 30d |
| 102 | 1.6.5.1 | **RF-03 verificado (V)** | 1d? | 2026-12-21 | 2026-12-21 |  | 30d |
| 103 |  | RF-03 verificado (V) | 1d? | 2026-12-21 | 2026-12-21 | 17 | 30d |
| 104 | 1.6.5.2 | **RF-02 construido e integrado (C)** | 1d? | 2026-10-06 | 2026-10-06 |  | 82d |
| 105 |  | RF-02 construido e integrado | 1d? | 2026-10-06 | 2026-10-06 | 85 | 82d |
| 106 | 1.6.5.3 | **RF-05 y RF-06 verificados (V)** | 1d? | 2026-11-12 | 2026-11-12 |  | 56d |
| 107 |  | RF-05 y RF-06 verificados | 1d? | 2026-11-12 | 2026-11-12 | 96, 87 | 56d |
| 108 | 1.6.6 | **Sprint 5 · 11–22/01/2027** | 60d? | 2026-10-06 | 2027-01-11 |  | 23d |
| 109 | 1.6.6.1 | **RF-02 y RF-04 verificados (V)** | 1d? | 2027-01-11 | 2027-01-11 |  | 23d |
| 110 |  | RF-02 y RF-04 verificados | 1d? | 2027-01-11 | 2027-01-11 | 20 | 23d |
| 111 | 1.6.6.2 | **RF-07 y RF-08 construidos e integrados (C)** | 1d? | 2026-10-06 | 2026-10-06 |  | 82d |
| 112 |  | RF-07 y RF-08 construidos e integrados | 1d? | 2026-10-06 | 2026-10-06 | 89, 98 | 82d |
| 113 | 1.6.6.3 | **Pruebas de sistema, carga y seguridad ejecutadas (EP-05)** | 1d? | 2026-10-06 | 2026-10-06 |  | 80d |
| 114 |  | Pruebas de sistema, carga y seguridad ejecutadas (EP-05) | 1d? | 2026-10-06 | 2026-10-06 | 100 | 80d |
| 115 | 1.6.6.4 | **Seguimiento técnico del piloto: primer tramo completado (EP-05)** | 1d? | 2026-10-07 | 2026-10-07 |  | 80d |
| 116 |  | Seguimiento técnico del piloto: primer tramo completado (EP-05) | 1d? | 2026-10-07 | 2026-10-07 | 114 | 80d |
| 117 | 1.6.7 | **Sprint 6 · 25/01–05/02/2027** | 68d? | 2026-10-08 | 2027-01-25 |  | 13d |
| 118 | 1.6.7.1 | **RF-07 y RF-08 verificados (V)** | 1d? | 2027-01-25 | 2027-01-25 |  | 13d |
| 119 |  | RF-07 y RF-08 verificados | 1d? | 2027-01-25 | 2027-01-25 | 23 | 13d |
| 120 | 1.6.7.2 | **Seguimiento técnico y evidencias finales del piloto completadas (EP-05)** | 1d? | 2026-10-08 | 2026-10-08 |  | 80d |
| 121 |  | Seguimiento técnico y evidencias finales del piloto completadas (EP-05) | 1d? | 2026-10-08 | 2026-10-08 | 116 | 80d |

## Version 2 (saved 2026-10-31)

Note of the change: Project v1.3

Last finish stays 2027-02-12.

Changed:

| ID | Task | Predecessors |
| --- | --- | --- |
| 92 | RF-01 verificado (V) | 14 → 14, 76 |
| 110 | RF-02 y RF-04 verificados | 20 → 20, 105 |
