# Proyecto TSL-2627 TuSuper en Línea

How a schedule from MS Project changed from version to version. A marks actual dates.

## Version 1 (saved 2026-11-04)

Note of the change: Project v1.6

| ID | WBS | Task | Duration | Start | Finish | Predecessors | Total float | Constraint |
| --- | --- | --- | --- | --- | --- | --- | --- | --- |
| 1 | 1 | **TSL-2627 TuSuper en Línea** | 87d? | 2026-10-05 | 2027-02-16 |  | 0d |  |
| 2 | 1.1 | **Dirección del Proyecto** | 87d? | 2026-10-05 | 2027-02-16 |  | 0d |  |
| 3 | 1.1.1 | **Planificación y gestión de la planificación** | 23d | 2026-10-05 | 2026-11-06 |  | 1d |  |
| 4 |  | Comienzo del Proyecto | 0d | 2026-10-05 | 2026-10-05 |  | 14d |  |
| 5 |  | Elaboración del Plan de Dirección del Proyecto, Alcance, EDT y Cronograma | 5d | 2026-10-05 | 2026-10-09 | 4 | 14d |  |
| 6 |  | Tramitación y negociación de la aceptación del calendario y alcance por el cliente | 5d | 2026-10-13 | 2026-10-19 | 5 | 14d |  |
| 7 |  | Aprobación del Plan de Dirección y Líneas Bases | 0d | 2026-11-06 | 2026-11-06 | 6 | 1d | start no earlier than 2026-11-06 |
| 8 | 1.1.2 | **Dirección y seguimiento del Sprint 1** | 10d | 2026-11-09 | 2026-11-20 |  | 0d |  |
| 9 |  | Inicio del Sprint 1 | 0d | 2026-11-09 | 2026-11-09 | 7 | 0d | start no earlier than 2026-11-09 |
| 10 |  | Dirección y seguimiento del Sprint 1 | 10d | 2026-11-09 | 2026-11-20 | 9 | 0d |  |
| 11 | 1.1.3 | **Dirección y seguimiento del Sprint 2** | 10d | 2026-11-23 | 2026-12-04 |  | 0d |  |
| 12 |  | Inicio Sprint 2 | 0d | 2026-11-23 | 2026-11-23 | 10 | 0d | start no earlier than 2026-11-23 |
| 13 |  | Dirección y seguimiento del Sprint 2 | 10d | 2026-11-23 | 2026-12-04 | 12 | 0d |  |
| 14 | 1.1.4 | **Dirección y seguimiento del Sprint 3** | 9d | 2026-12-07 | 2026-12-18 |  | 0d |  |
| 15 |  | Inicio Sprint 3 | 0d | 2026-12-07 | 2026-12-07 | 13 | 0d | start no earlier than 2026-12-07 |
| 16 |  | Dirección y seguimiento del Sprint 3 | 9d | 2026-12-07 | 2026-12-18 | 15 | 0d |  |
| 17 | 1.1.5 | **Dirección y seguimiento del Sprint 4** | 7d | 2026-12-21 | 2027-01-08 |  | 0d |  |
| 18 |  | Inicio Sprint 4 | 0d | 2026-12-21 | 2026-12-21 | 16 | 0d | start no earlier than 2026-12-21 |
| 19 |  | Dirección y seguimiento del Sprint 4 | 7d | 2026-12-21 | 2027-01-08 | 18 | 0d |  |
| 20 | 1.1.6 | **Dirección y seguimiento del Sprint 5** | 10d | 2027-01-11 | 2027-01-22 |  | 0d |  |
| 21 |  | Inicio Sprint 5 | 0d | 2027-01-11 | 2027-01-11 | 19 | 0d | start no earlier than 2027-01-11 |
| 22 |  | Dirección y seguimiento del Sprint 5 | 10d | 2027-01-11 | 2027-01-22 | 21 | 2d |  |
| 23 | 1.1.7 | **Dirección y seguimiento del Sprint 6** | 10d | 2027-01-25 | 2027-02-05 |  | 2d |  |
| 24 |  | Inicio Sprint 6 | 0d | 2027-01-25 | 2027-01-25 | 22 | 2d | start no earlier than 2027-01-25 |
| 25 |  | Dirección y seguimiento del Sprint 6 | 10d | 2027-01-25 | 2027-02-05 | 24 | 4d |  |
| 26 | 1.1.8 | **Traspaso al servicio de mantenimiento completado** | 1d | 2027-02-12 | 2027-02-12 |  | 0d |  |
| 27 |  | Traspaso al servicio de mantenimiento completado | 1d | 2027-02-12 | 2027-02-12 | 25, 135, 151 | 0d |  |
| 28 | 1.1.9 | **Cierre del proyecto aprobado y completado** | 2d? | 2027-02-15 | 2027-02-16 |  | 0d |  |
| 29 |  | Elaboración del Informe de Cierre y Lecciones Aprendidas | 1d | 2027-02-15 | 2027-02-15 | 25, 27 | 0d |  |
| 30 |  | Cierre del proyecto aprobado y completado | 1d? | 2027-02-16 | 2027-02-16 | 29 | 0d |  |
| 31 |  | Cierre del proyecto | 0d | 2027-02-16 | 2027-02-16 | 30 | 0d | start no earlier than 2027-02-12 |
| 32 | 1.2 | **Adquisiciones** | 24d? | 2026-11-06 | 2026-12-11 |  | 40d |  |
| 33 | 1.2.1 | **Contrato del conector con ERP: pedido, seguimiento y aceptación** | 8d? | 2026-11-06 | 2026-11-18 |  | 52d |  |
| 34 |  | Pedido del conector ERP | 0d | 2026-11-06 | 2026-11-06 | 7 | 52d |  |
| 35 |  | Tramitación del Pedido del conector ERP tramitado | 1d? | 2026-11-06 | 2026-11-06 | 34 | 52d |  |
| 36 |  | Primer pago (40%) | 0d | 2026-11-09 | 2026-11-09 | 35 | 52d | start no earlier than 2026-11-09 |
| 37 |  | Seguimiento del proveedor del conector | 1d? | 2026-11-09 | 2026-11-09 | 36 | 52d |  |
| 38 |  | Conector recibido y aceptado formalmente | 1d? | 2026-11-10 | 2026-11-10 | 37 | 52d |  |
| 39 |  | Segundo pago (60%) con Retención 10% | 0d | 2026-11-18 | 2026-11-18 | 38 | 56d | start no earlier than 2026-11-18 |
| 40 | 1.2.2 | **Encargo de documentación de uso y formación: seguimiento y aceptación** | 24d? | 2026-11-06 | 2026-12-11 |  | 36d |  |
| 41 |  | Encargo de documentación y formación realizado | 1d? | 2026-11-06 | 2026-11-06 | 7 | 59d |  |
| 42 |  | Encargo de documentación | 0d | 2026-11-06 | 2026-11-06 | 41 | 59d | start no earlier than 2026-11-06 |
| 43 |  | Documentación entregada y acceso a preproducción habilitado para Formación | 0d | 2026-12-11 | 2026-12-11 | 42 | 36d | start no earlier than 2026-12-11 |
| 44 | 1.3 | **Integración con ERP · ENT-02** | 36d? | 2026-11-09 | 2027-01-08 |  | 15d |  |
| 45 | 1.3.1 | **Sprint 1 · Especificación de interfaz ERP acordada (EP-04)** | 2d? | 2026-11-09 | 2026-11-10 |  | 15d |  |
| 46 |  | Solcitud de Acceso a los datos del ERP | 0d | 2026-11-09 | 2026-11-09 | 7 | 62d | start no earlier than 2026-11-09 |
| 47 |  | Gestión Solcitud de Acceso a los datos del ERP | 1d? | 2026-11-09 | 2026-11-09 | 46 | 62d |  |
| 48 |  | Sprint 1 · Especificación de interfaz ERP acordada (EP-04) | 2d | 2026-11-09 | 2026-11-10 | 9 | 15d |  |
| 49 | 1.3.2 | **Sprint 2 · Adaptación propia y ensayos con datos simulados (EP-04)** | 5d | 2026-11-23 | 2026-11-27 |  | 7d |  |
| 50 |  | Sprint 2 · Adaptación propia y ensayos con datos simulados (EP-04) | 5d | 2026-11-23 | 2026-11-27 | 12, 48 | 7d |  |
| 51 | 1.3.3 | **Sprint 3 · Conector integrado, carga inicial y pruebas reales completadas (EP-04)** | 10d | 2026-12-07 | 2026-12-21 |  | 2d |  |
| 52 |  | Sprint 3 · Conector integrado, carga inicial y pruebas reales completadas (EP-04) | 5d | 2026-12-07 | 2026-12-14 | 15, 50 | 2d |  |
| 53 |  | Catálogo, precios y existencias del ERP, cargados y existencias del ERP, cargados y sincronizados (EP-04), con el conector y ERP funcionando | 5d | 2026-12-15 | 2026-12-21 | 52 | 6.75d |  |
| 54 |  | Aceptación del Conector | 0d | 2026-12-21 | 2026-12-21 | 52, 38, 53 | 24d | start no earlier than 2026-12-18 |
| 55 | 1.3.4 | **Sprint 4 · Sincronización comprobada y carga productiva de 32 tiendas (EP-04)** | 6d | 2026-12-22 | 2027-01-08 |  | 27d |  |
| 56 |  | Sprint 4 · Sincronización comprobada y carga productiva de 32 tiendas (EP-04) | 6d | 2026-12-22 | 2027-01-08 | 18, 54 | 27d |  |
| 57 | 1.4 | **Plataforma de compra en línea · ENT-01** | 78d? | 2026-10-05 | 2027-02-03 |  | 9d |  |
| 58 | 1.4.1 | **Planificación** | 32d? | 2026-10-05 | 2026-11-18 |  | 44.25d |  |
| 59 | 1.4.1.1 | **Especificación funcional común y criterios de aceptación acordados (EP-01)** | 27d? | 2026-10-05 | 2026-11-11 |  | 20.25d |  |
| 60 |  | Se Solicitó a TuSuper el alta en la pasarela de pago | 0d | 2026-10-05 | 2026-10-05 | 4 | 50.25d |  |
| 61 |  | Solicitud de Franjas de Entrega, zonas de reparto y repartidores y acceso a Datos ERP | 0d | 2026-11-09 | 2026-11-09 | 7 | 28.75d | start no earlier than 2026-11-09 |
| 62 |  | Gestión de la Solicitud de Franjas de Entrega, zonas de reparto y repartidores y acceso a Datos ERP | 0.5d | 2026-11-09 | 2026-11-09 | 61 | 28.75d |  |
| 63 |  | Solicitud de contrato a Jurídico sobre Taracera como encargada de procesamiento de datos de TuSuper | 0d | 2026-11-06 | 2026-11-06 | 7 | 29.25d | start no earlier than 2026-10-28 |
| 64 |  | Gestión de la Solicitud de contrato a Jurídico sobre Taracera como encargada de procesamiento de datos de TuSuper | 1d? | 2026-11-06 | 2026-11-06 | 63 | 29.25d |  |
| 65 |  | Especificación funcional común y criterios de aceptación acordados (EP-01) | 3d | 2026-11-09 | 2026-11-11 | 9, 60 | 26.25d |  |
| 66 | 1.4.1.2 | **Sistema de diseño e interfaz común preparados (EP-02)** | 3d | 2026-11-12 | 2026-11-16 |  | 45d |  |
| 67 |  | Sistema de diseño e interfaz común preparados (EP-02) | 3d | 2026-11-12 | 2026-11-16 | 65 | 42d |  |
| 68 | 1.4.1.3 | **Arquitectura técnica de la plataforma diseñada (EP-03)** | 2d | 2026-11-17 | 2026-11-18 |  | 45d |  |
| 69 |  | Arquitectura técnica de la plataforma diseñada (EP-03) | 2d | 2026-11-17 | 2026-11-18 | 67 | 42d |  |
| 70 | 1.4.2 | **Sprint 1 · 09-20/11/2026** | 15d | 2026-11-12 | 2026-12-02 |  | 20.25d |  |

| ID | WBS | Task | Duration | Start | Finish | Predecessors | Total float | Constraint |
| --- | --- | --- | --- | --- | --- | --- | --- | --- |
| 71 | 1.4.2.1 | **RF-01 y RF-03 especificados y diseñados (E)** | 2.75d | 2026-11-12 | 2026-11-16 |  | 38.38d |  |
| 72 |  | RF-01 y RF-03 especificados y diseñados | 2.75d | 2026-11-12 | 2026-11-16 | 65, 9 | 35.38d |  |
| 73 | 1.4.2.2 | **RF-06 especificado y diseñado (E)** | 3.75d | 2026-11-12 | 2026-11-17 |  | 20.25d |  |
| 74 |  | RF-06 especificado y diseñado | 3.75d | 2026-11-12 | 2026-11-17 | 59 | 26.25d |  |
| 75 | 1.4.2.3 | **Entornos de desarrollo y CI/CD operativos (EP-03)** | 10d | 2026-11-19 | 2026-12-02 |  | 45d |  |
| 76 |  | Entornos de desarrollo y CI/CD operativos (EP-03) | 10d | 2026-11-19 | 2026-12-02 | 68 | 42d |  |
| 77 | 1.4.3 | **Sprint 2 · 23/11-04/12/2026** | 24.75d | 2026-11-23 | 2027-01-07 |  | 13.25d |  |
| 78 | 1.4.3.1 | **RF-01 y RF-03 construidos e integrados (C)** | 12.37d | 2026-11-23 | 2026-12-10 |  | 34.13d |  |
| 79 |  | RF-01 y RF-03 construidos e integrados | 12.37d | 2026-11-23 | 2026-12-10 | 72, 12 | 31.13d |  |
| 80 | 1.4.3.2 | **RF-02 y RF-04 especificados y diseñados (E)** | 3.66d | 2026-11-23 | 2026-11-26 |  | 19.34d |  |
| 81 |  | RF-02 y RF-04 especificados y diseñados | 3.66d | 2026-11-23 | 2026-11-26 | 12 | 25.34d |  |
| 82 | 1.4.3.3 | **RF-06 construido e integrado (C)** | 9.75d | 2026-12-15 | 2027-01-07 |  | 2d |  |
| 83 |  | RF-06 construido e integrado | 9.75d | 2026-12-15 | 2027-01-07 | 74, 12, 52 | 8d |  |
| 84 | 1.4.3.4 | **RF-05 y RF-07 especificados y diseñados (E)** | 3.75d | 2026-11-23 | 2026-11-26 |  | 13.25d |  |
| 85 |  | Recepción de Franjas y Repartidores | 0d | 2026-11-23 | 2026-11-23 | 62 | 19.25d | start no earlier than 2026-11-23 |
| 86 |  | RF-05 especificados y diseñados | 3.75d | 2026-11-23 | 2026-11-26 | 85, 12 | 19.25d |  |
| 87 |  | RF-07 especificados y diseñados | 1.5d | 2026-11-23 | 2026-11-24 | 12 | 21.5d |  |
| 88 | 1.4.4 | **Sprint 3 · 07-18/12/2026** | 9.75d? | 2026-12-07 | 2026-12-21 |  | 7d |  |
| 89 | 1.4.4.1 | **RF-01 verificado (V)** | 3.25d | 2026-12-10 | 2026-12-15 |  | 34.13d |  |
| 90 |  | RF-01 verificado (V) | 3.25d | 2026-12-10 | 2026-12-15 | 15, 79 | 31.13d |  |
| 91 |  | dentificación del comprador (RF-01.2) | 0d | 2026-12-15 | 2026-12-15 | 90 | 34.38d |  |
| 92 | 1.4.4.2 | **RF-04 construido e integrado (C)** | 9.25d? | 2026-12-07 | 2026-12-21 |  | 24.25d |  |
| 93 |  | RF-04 construido e integrado | 8.25d | 2026-12-07 | 2026-12-18 | 81, 15 | 30.25d |  |
| 94 |  | RF-04 pasarela de pago construida | 0d | 2026-12-18 | 2026-12-18 | 93 | 30.75d | start no earlier than 2026-12-17 |
| 95 |  | Solicitud de auditoria a TuSuper | 1d? | 2026-12-18 | 2026-12-21 | 94 | 30.75d |  |
| 96 | 1.4.4.3 | **RF-05 construido e integrado (C)** | 9.75d | 2026-12-07 | 2026-12-21 |  | 7d |  |
| 97 |  | RF-05 construido e integrado | 9.75d | 2026-12-07 | 2026-12-21 | 87, 15, 86 | 13d |  |
| 98 | 1.4.4.4 | **RF-08 especificado y diseñado (E)** | 3.75d | 2026-12-07 | 2026-12-11 |  | 16.75d |  |
| 99 |  | RF-08 especificado y diseñado | 3.75d | 2026-12-07 | 2026-12-11 | 15 | 22.75d |  |
| 100 | 1.4.4.5 | **Plan y escenarios de pruebas de sistema preparados (EP-05)** | 6d | 2026-12-07 | 2026-12-15 |  | 10d |  |
| 101 |  | Plan y escenarios de pruebas de sistema preparados (EP-05) | 6d | 2026-12-07 | 2026-12-15 | 15 | 16d |  |
| 102 | 1.4.5 | **Sprint 4 · 21/12/2026–08/01/2027** | 15.17d? | 2026-12-21 | 2027-01-21 |  | 4d |  |
| 103 | 1.4.5.1 | **RF-03 verificado (V)** | 3.25d? | 2026-12-21 | 2027-01-04 |  | 30.75d |  |
| 104 |  | RF-03 verificado (V) | 2.25d | 2026-12-21 | 2026-12-23 | 18, 79, 90 | 27.75d |  |
| 105 |  | RF-03.4 Persistencia Sesión verificada (V) | 1d? | 2026-12-23 | 2027-01-04 | 104 | 27.75d |  |
| 106 | 1.4.5.2 | **RF-02 construido e integrado (C)** | 15.17d | 2026-12-21 | 2027-01-21 |  | 4d |  |
| 107 |  | RF-02 construido e integrado | 15.17d | 2026-12-21 | 2027-01-21 | 81, 18 | 10d |  |
| 108 | 1.4.5.3 | **RF-05 y RF-06 verificados (V)** | 3.75d | 2027-01-07 | 2027-01-13 |  | 2d |  |
| 109 |  | RF-05 y RF-06 verificados | 3.75d | 2027-01-07 | 2027-01-13 | 97, 83, 18, 53 | 8d |  |
| 110 | 1.4.6 | **Sprint 5 · 11–22/01/2027** | 15.83d | 2027-01-11 | 2027-02-01 |  | 0d |  |
| 111 | 1.4.6.1 | **RF-02 y RF-04 verificados (V)** | 13.83d | 2027-01-13 | 2027-02-01 |  | 2.17d |  |
| 112 |  | RF-02 verificado | 5.83d | 2027-01-25 | 2027-02-01 | 96, 20, 53, 107 | 8.17d |  |
| 113 |  | RF-02.6 Datos de ERP por tienda verificado (V) | 0d | 2027-02-01 | 2027-02-01 | 112 | 8.17d |  |
| 114 |  | RF-04 Recepción de Credenciales de la pasarela | 0d | 2027-01-13 | 2027-01-13 | 82 | 20.5d | start no earlier than 2027-01-13 |
| 115 |  | RF-04 verificados | 1.5d | 2027-01-21 | 2027-01-22 | 21, 107, 52, 93, 99, 114 | 14.33d |  |
| 116 | 1.4.6.2 | **RF-07 y RF-08 construidos e integrados (C)** | 9.75d | 2027-01-13 | 2027-01-27 |  | 2d |  |
| 117 |  | RF-07 y RF-08 construidos e integrados | 9.75d | 2027-01-13 | 2027-01-27 | 87, 99, 21, 109 | 8d |  |
| 118 | 1.4.6.3 | **Pruebas de sistema, carga y seguridad ejecutadas (EP-05)** | 6d | 2027-01-11 | 2027-01-18 |  | 0d |  |
| 119 |  | Pruebas de sistema, carga y seguridad ejecutadas (EP-05) | 6d | 2027-01-11 | 2027-01-18 | 101, 21 | 0d |  |
| 120 | 1.4.6.4 | **Seguimiento técnico del piloto: primer tramo completado (EP-05)** | 6d | 2027-01-19 | 2027-01-26 |  | 0d |  |
| 121 |  | Seguimiento técnico del piloto: primer tramo completado (EP-05) | 6d | 2027-01-19 | 2027-01-26 | 119, 21 | 0d |  |
| 122 | 1.4.7 | **Sprint 6 · 25/01–05/02/2027** | 6d | 2027-01-27 | 2027-02-03 |  | 0d |  |
| 123 | 1.4.7.1 | **RF-07 y RF-08 verificados (V)** | 3.75d | 2027-01-27 | 2027-02-01 |  | 2d |  |
| 124 |  | RF-07 y RF-08 verificados | 3.75d | 2027-01-27 | 2027-02-01 | 24, 109, 53, 117 | 8d |  |
| 125 | 1.4.7.2 | **Seguimiento técnico y evidencias finales del piloto completadas (EP-05)** | 6d | 2027-01-27 | 2027-02-03 |  | 0d |  |
| 126 |  | Seguimiento técnico y evidencias finales del piloto completadas (EP-05) | 6d | 2027-01-27 | 2027-02-03 | 121, 24 | 0d |  |
| 127 | 1.5 | **Documentación y formación · ENT-04** | 18d? | 2026-12-04 | 2027-01-11 |  | 26d |  |
| 128 | 1.5.1 | **Sprint 3 · Acceso Preproducción y Documentación técnica y funcional entregada a Formación (EP-07)** | 6d? | 2026-12-04 | 2026-12-14 |  | 38d |  |
| 129 |  | Solicitud de las listas del personal a formar | 0d | 2026-12-04 | 2026-12-04 | 7 | 40d | start no earlier than 2026-12-04 |
| 130 |  | Gestión de la Solicitud de las listas del personal a formar | 1d? | 2026-12-04 | 2026-12-04 | 129 | 40d |  |
| 131 |  | Sprint 3 · Documentación técnica y funcional entregada a Formación (EP-07) | 5d | 2026-12-07 | 2026-12-14 | 15 | 35d |  |
| 132 |  | Sprint 3 · Acceso a preproducción habilitado para Formación (EP-07) | 0d | 2026-12-14 | 2026-12-14 | 131, 15 | 35d |  |
| 133 | 1.5.2 | **Sprint 5 · Formación (EP-07)** | 1d? | 2027-01-11 | 2027-01-11 |  | 23d |  |
| 134 |  | Recepción de la lista del personal a formar | 0d | 2027-01-11 | 2027-01-11 | 21 | 23d |  |
| 135 |  | Formación del personal | 1d? | 2027-01-11 | 2027-01-11 | 134, 43 | 23d |  |
| 136 | 1.6 | **Puesta en producción · ENT-03** | 50d? | 2026-11-23 | 2027-02-11 |  | 3d |  |
| 137 | 1.6.1 | **Sprint 2 · Entorno de preproducción preparado (EP-06)** | 10d? | 2026-11-23 | 2026-12-04 |  | 28d |  |
| 138 |  | Solicitud de cuentas de desarrollo (app móviles) | 0d | 2026-12-04 | 2026-12-04 | 7 | 24d | start no earlier than 2026-12-04 |
| 139 |  | Gestión de la Solicitud de cuentas de desarrollo | 1d? | 2026-12-04 | 2026-12-04 | 12, 138 | 40d |  |
| 140 |  | Sprint 2 · Entorno de preproducción preparado (EP-06) | 5d | 2026-11-23 | 2026-11-27 | 12 | 28d |  |

| ID | WBS | Task | Duration | Start | Finish | Predecessors | Total float | Constraint |
| --- | --- | --- | --- | --- | --- | --- | --- | --- |
| 141 |  | Entorno de preproducción construido | 0d | 2026-12-04 | 2026-12-04 | 140 | 41d | start no earlier than 2026-12-04 |
| 142 | 1.6.2 | **Sprint 4 · Despliegue de la plataforma en tres tiendas piloto (EP-06)** | 5d | 2026-12-21 | 2027-01-07 |  | 14d |  |
| 143 |  | Cuentas de desarrollo disponibles (app móviles) | 0d | 2026-12-21 | 2026-12-21 | 15, 138 | 14d | start no earlier than 2026-12-21 |
| 144 |  | Sprint 4 · Despliegue de la plataforma en tres tiendas piloto (EP-06) | 5d | 2026-12-21 | 2027-01-05 | 15, 143, 140 | 14d |  |
| 145 |  | Publicación de app móviles | 0d | 2027-01-07 | 2027-01-07 | 138 | 26d | start no earlier than 2027-01-07 |
| 146 | 1.6.3 | **Sprint 5 · Piloto operativo y supervisado: primer tramo (EP-06)** | 1d? | 2027-01-11 | 2027-01-11 |  | 12d |  |
| 147 |  | Sprint 5 · Piloto operativo y supervisado: primer tramo (EP-06) | 1d? | 2027-01-11 | 2027-01-11 | 21, 144 | 12d |  |
| 148 | 1.6.4 | **Sprint 6 · 25/01–05/02/2027** | 14d | 2027-01-25 | 2027-02-11 |  | 0d |  |
| 149 | 1.6.4.1 | **Piloto operativo finalizado: segundo tramo (EP-06)** | 5d | 2027-01-25 | 2027-01-29 |  | 3d |  |
| 150 |  | Piloto operativo finalizado: segundo tramo (EP-06) | 5d | 2027-01-25 | 2027-01-29 | 24, 147 | 3d |  |
| 151 | 1.6.4.2 | **Despliegue en producción y apertura de las 32 tiendas (EP-06)** | 6d | 2027-02-04 | 2027-02-11 | 54, 113, 115, 124, 126 | 0d |  |
| 152 |  | Despliegue en producción y apertura de las 32 tiendas (EP-06) | 6d | 2027-02-04 | 2027-02-11 | 150 | 0d |  |

## Version 2 (saved 2026-11-04)

Note of the change: Merge pull request #7 from CarlosVP05/origin/5-estimaciones

Last finish stays 2027-02-16.

Added:

| ID | Task | Duration | Start | Finish | Predecessors |
| --- | --- | --- | --- | --- | --- |
| 65 | Datos de franjas, capacidad, zonas de reparto y repartidores facilitados por TuSuper | 0d | 2026-11-09 | 2026-11-09 | 62 |
| 75 | Equipos y conexión de las tiendas disponibles para usar el panel | 0d | 2026-11-06 | 2026-11-06 | 7 |
| 103 | Entorno de verificación de TuSuper y cargas de datos disponibles | 0d | 2026-12-21 | 2026-12-21 | 7, 53 |
| 138 | Personal de las tiendas piloto puesto a disposición por TuSuper | 0d | 2026-12-04 | 2026-12-04 | 132 |
| 151 | Tiendas piloto designadas y dos ciclos completos de reposición acreditados | 0d | 2026-12-21 | 2026-12-21 | 7, 53 |

Changed:

| ID | Task | Start | Finish | Duration | Total float | Predecessors | Other |
| --- | --- | --- | --- | --- | --- | --- | --- |
| 45 | **Sprint 1 · Especificación de interfaz ERP acordada (EP-04)** |  | 2026-11-10 → 2026-11-11 (+1d) | 2d? → 3d? | 15d → 14d |  |  |
| 48 | Sprint 1 · Especificación de interfaz ERP acordada (EP-04) | 2026-11-09 → 2026-11-10 (+1d) | 2026-11-10 → 2026-11-11 (+1d) |  | 15d → 14d | 9 → 9, 46, 47 |  |
| 52 | Sprint 3 · Conector integrado, carga inicial y pruebas reales completadas (EP-04) |  |  |  |  | 15, 50 → 15, 50, 38 |  |
| 53 | Catálogo, precios y existencias del ERP, cargados y existencias del ERP, cargados y sincronizados (EP-04), con el conector y ERP funcionando |  |  |  |  | 52 → 52, 38 |  |
| 71 | **Sprint 1** | 2026-11-12 → 2026-11-06 (-6d) |  | 15d → 19d | 20.25d → 24.25d |  | was named Sprint 1 · 09-20/11/2026 |
| 74 | **RF-06 especificado y diseñado (E)** | 2026-11-12 → 2026-11-06 (-6d) |  | 3.75d → 7.75d | 20.25d → 24.25d |  |  |
| 79 | **Sprint 2** |  |  |  |  |  | was named Sprint 2 · 23/11-04/12/2026 |
| 90 | **Sprint 3** |  |  | 9.75d? → 10d? |  |  | was named Sprint 3 · 07-18/12/2026 |
| 102 | **Plan y escenarios de pruebas de sistema preparados (EP-05)** |  | 2026-12-15 → 2026-12-21 (+6d) | 6d → 10d |  |  |  |
| 105 | **Sprint 4** |  |  |  |  |  | was named Sprint 4 · 21/12/2026–08/01/2027 |
| 113 | **Sprint 5** |  |  |  |  |  | was named Sprint 5 · 11–22/01/2027 |
| 125 | **Sprint 6** |  |  |  |  |  | was named Sprint 6 · 25/01–05/02/2027 |
| 136 | **Sprint 5 · Formación (EP-07)** | 2027-01-11 → 2026-12-04 (-38d) |  | 1d? → 18d? | 23d → 26d |  |  |
| 150 | **Sprint 5 · Piloto operativo y supervisado: primer tramo (EP-06)** | 2027-01-11 → 2026-12-21 (-21d) |  | 1d? → 7d? | 12d → 18d |  |  |
