# Proyecto TSL-2627 TuSuper en Línea

How a schedule from MS Project changed from version to version. A marks actual dates.

## Version 1 (saved 2026-11-14)

Note of the change: Ultimo project

| ID | WBS | Task | Duration | Start | Finish | Predecessors | Total float | Constraint |
| --- | --- | --- | --- | --- | --- | --- | --- | --- |
| 1 | 1 | **TSL-2627 TuSuper en Línea** | 84d | 2026-10-05 A | 2027-02-12 |  | 0d |  |
| 2 | 1.1 | **Dirección del Proyecto** | 84d | 2026-10-05 | 2027-02-12 |  | 0d |  |
| 3 | 1.1.1 | **Planificación y gestión de la planificación** | 23d | 2026-10-05 | 2026-11-06 |  | 13.7d |  |
| 4 |  | Comienzo del Proyecto | 0d | 2026-10-05 | 2026-10-05 |  | 13.7d |  |
| 5 |  | Elaboración del Plan de Dirección del Proyecto, Alcance, EDT y Cronograma | 5d | 2026-10-05 | 2026-10-09 | 4 | 13.7d |  |
| 6 |  | Tramitación y negociación de la aceptación del calendario y alcance por el cliente | 5d | 2026-10-13 | 2026-10-19 | 5 | 13.7d |  |
| 7 |  | Solicitud de Informe Jurídico | 1d | 2026-10-28 | 2026-10-28 | 6 | 7.7d | start no earlier than 2026-10-28 |
| 8 |  | Aceptación del calendario y alcance | 0d | 2026-11-06 | 2026-11-06 | 7 | 61d | start no earlier than 2026-11-06 |
| 9 |  | Recepción sobre el informe Jurídico TSL-2627-JUR-01 | 0d | 2026-11-04 | 2026-11-04 | 7 | 3.7d | start no earlier than 2026-11-04 |
| 10 |  | Aprobación del Plan de Dirección y Líneas Bases | 0d | 2026-11-06 | 2026-11-06 | 9 | 1.7d | start no earlier than 2026-11-06 |
| 11 |  | CIE-01 · Reunión de cierre de planificación | 0d | 2026-11-06 | 2026-11-06 |  | 61d | start no earlier than 2026-11-06 |
| 12 | 1.1.2 | **Dirección y seguimiento del Sprint 1** | 10d | 2026-11-09 | 2026-11-20 |  | 0.7d |  |
| 13 |  | Inicio del Sprint 1 | 0d | 2026-11-09 | 2026-11-09 | 10 | 0.7d | start no earlier than 2026-11-09 |
| 14 |  | Dirección del Sprint 1 | 2d | 2026-11-09 | 2026-11-10 | 13 | 0.7d |  |
| 15 |  | Seguimiento del Sprint 1 | 8d | 2026-11-11 | 2026-11-20 | 14 | 0.7d |  |
| 16 | 1.1.3 | **Dirección y seguimiento del Sprint 2** | 10d | 2026-11-23 | 2026-12-04 |  | 0.7d |  |
| 17 |  | Inicio Sprint 2 | 0d | 2026-11-23 | 2026-11-23 | 15 | 0.7d | start no earlier than 2026-11-23 |
| 18 |  | Dirección del Sprint 2 | 2d | 2026-11-23 | 2026-11-24 | 17 | 0.7d |  |
| 19 |  | Seguimiento del Sprint 2 | 8d | 2026-11-25 | 2026-12-04 | 18 | 0.7d |  |
| 20 |  | CIE-02 · Reunión de cierre de diciembre | 0d | 2026-12-04 | 2026-12-04 |  | 41d | start no earlier than 2026-12-04 |
| 21 | 1.1.4 | **Dirección y seguimiento del Sprint 3** | 9d | 2026-12-07 | 2026-12-18 |  | 0.7d |  |
| 22 |  | Inicio Sprint 3 | 0d | 2026-12-07 | 2026-12-07 | 19 | 0.7d | start no earlier than 2026-12-07 |
| 23 |  | Dirección del Sprint 3 | 2d | 2026-12-07 | 2026-12-09 | 22 | 0.7d |  |
| 24 |  | Seguimiento del Sprint 3 | 7d | 2026-12-10 | 2026-12-18 | 23 | 0.7d |  |
| 25 | 1.1.5 | **Dirección y seguimiento del Sprint 4** | 7d | 2026-12-21 | 2027-01-08 |  | 0.7d |  |
| 26 |  | Inicio Sprint 4 | 0d | 2026-12-21 | 2026-12-21 | 24 | 0.7d | start no earlier than 2026-12-21 |
| 27 |  | Dirección del Sprint 4 | 2d | 2026-12-21 | 2026-12-22 | 26 | 0.7d |  |
| 28 |  | Seguimiento del Sprint 4 | 5d | 2026-12-23 | 2027-01-08 | 27 | 0.7d |  |
| 29 |  | CIE-03 · Reunión de cierre de Fase 2 | 0d | 2027-01-08 | 2027-01-08 |  | 24d | finish no earlier than 2027-01-08 |
| 30 | 1.1.6 | **Dirección y seguimiento del Sprint 5** | 10d | 2027-01-11 | 2027-01-22 |  | 0.7d |  |
| 31 |  | Inicio Sprint 5 | 0d | 2027-01-11 | 2027-01-11 | 28 | 0.7d | start no earlier than 2027-01-11 |
| 32 |  | Dirección del Sprint 5 | 2d | 2027-01-11 | 2027-01-12 | 31 | 0.7d |  |
| 33 |  | Seguimiento del Sprint 5 | 8d | 2027-01-13 | 2027-01-22 | 32 | 0.7d |  |
| 34 | 1.1.7 | **Dirección y seguimiento del Sprint 6** | 10d | 2027-01-25 | 2027-02-05 |  | 0.7d |  |
| 35 |  | Inicio Sprint 6 | 0d | 2027-01-25 | 2027-01-25 | 33 | 0.7d | start no earlier than 2027-01-25 |
| 36 |  | Dirección del Sprint 6 | 2d | 2027-01-25 | 2027-01-26 | 35 | 0.7d |  |
| 37 |  | Seguimiento del Sprint 6 | 8d | 2027-01-27 | 2027-02-05 | 36 | 0.7d |  |
| 38 |  | CIE-04 · Reunión de cierre de Fase 3 y piloto | 0d | 2027-02-05 | 2027-02-05 |  | 5d | start no earlier than 2027-02-05 |
| 39 | 1.1.8 | **Traspaso al servicio de mantenimiento completado** | 1.3d | 2027-02-05 | 2027-02-09 |  | 0.7d |  |
| 40 |  | Entrada en Explotación | 0d | 2027-02-05 | 2027-02-05 | 37 | 0.7d |  |
| 41 |  | Preparación y coordinación del traspaso al servicio de mantenimiento. | 0.8d | 2027-02-08 | 2027-02-08 | 40 | 0.7d |  |
| 42 |  | Entrega y traspaso al servicio de mantenimiento completado. | 0.5d | 2027-02-08 | 2027-02-09 | 41 | 0.7d |  |
| 43 | 1.1.9 | **Cierre del proyecto aprobado y completado** | 2.7d | 2027-02-09 | 2027-02-12 |  | 0d |  |
| 44 |  | Elaboración del Informe de Cierre y Lecciones Aprendidas | 1d | 2027-02-09 | 2027-02-10 | 37, 42 | 0.7d |  |
| 45 |  | Cierre del proyecto aprobado y completado | 1d | 2027-02-10 | 2027-02-11 | 44 | 0.7d |  |
| 46 |  | Cierre del proyecto | 0d | 2027-02-12 | 2027-02-12 | 45, 194 | 0d | start no earlier than 2027-02-12 |
| 47 | 1.2 | **Plataforma de compra en línea · ENT-01** | 80d | 2026-10-05 | 2027-02-05 |  | 4d |  |
| 48 | 1.2.1 | **Planificación** | 32d | 2026-10-05 | 2026-11-18 |  | 50d |  |
| 49 | 1.2.1.1 | **Especificación funcional común y criterios de aceptación acordados (EP-01)** | 27d | 2026-10-05 | 2026-11-11 |  | 33.96d |  |
| 50 |  | Se Solicitó a TuSuper el alta en la pasarela de pago | 0d | 2026-10-05 | 2026-10-05 | 4 | 57.96d |  |
| 51 |  | Solicitud de Franjas de Entrega, zonas de reparto y repartidores y acceso a Datos ERP | 0d | 2026-11-09 | 2026-11-09 | 10 | 36.45d | start no earlier than 2026-11-09 |
| 52 |  | Gestión de la Solicitud de Franjas de Entrega, zonas de reparto y repartidores y acceso a Datos ERP | 0.5d | 2026-11-09 | 2026-11-09 | 51 | 36.45d |  |
| 53 |  | Solicitud de contrato a Jurídico sobre Taracera como encargada de procesamiento de datos de TuSuper | 0d | 2026-11-06 | 2026-11-06 | 10 | 36.96d | start no earlier than 2026-10-28 |
| 54 |  | Gestión de la Solicitud de contrato a Jurídico sobre Taracera como encargada de procesamiento de datos de TuSuper | 1d | 2026-11-06 | 2026-11-06 | 53 | 36.96d |  |
| 55 |  | Datos de franjas, capacidad, zonas de reparto y repartidores facilitados por TuSuper | 0d | 2026-11-09 | 2026-11-09 | 52 | 36.46d |  |
| 56 |  | Especificación funcional común y criterios de aceptación acordados (EP-01) | 3d | 2026-11-09 | 2026-11-11 | 13, 50 | 33.96d |  |
| 57 | 1.2.1.2 | **Sistema de diseño e interfaz común preparados (EP-02)** | 3d | 2026-11-12 | 2026-11-16 |  | 50d |  |
| 58 |  | Sistema de diseño (EP-02) | 2d | 2026-11-12 | 2026-11-13 | 56 | 50d |  |
| 59 |  | Interfaz común preparada (EP-02) | 1d | 2026-11-16 | 2026-11-16 | 58 | 50d |  |
| 60 | 1.2.1.3 | **Arquitectura técnica de la plataforma diseñada (EP-03)** | 2d | 2026-11-17 | 2026-11-18 |  | 50d |  |
| 61 |  | Definición y planificación de la arquitectura técnica de la plataforma (EP-03). | 1d | 2026-11-17 | 2026-11-17 | 59 | 50d |  |
| 62 |  | Diseño y documentación de la arquitectura técnica de la plataforma completados (EP-03). | 1d | 2026-11-18 | 2026-11-18 | 61 | 50d |  |
| 63 | 1.2.2 | **Sprint 1** | 10d | 2026-11-09 | 2026-11-20 |  | 36.96d |  |
| 64 | 1.2.2.1 | **RF-01 y RF-03 especificados y diseñados (E)** | 5d | 2026-11-12 | 2026-11-18 |  | 47.24d |  |
| 65 |  | RF-01 especificado | 1.18d | 2026-11-12 | 2026-11-13 | 56, 13 | 47.98d |  |
| 66 |  | RF-01 diseñado | 0.36d | 2026-11-13 | 2026-11-13 | 65 | 47.98d |  |
| 67 |  | RF-03 especificado | 1.5d | 2026-11-12 | 2026-11-13 | 56, 13 | 47.24d |  |
| 68 |  | RF-03 diseñado | 0.5d | 2026-11-13 | 2026-11-13 | 67 | 47.24d |  |
| 69 |  | [Tarea Colchón] Reserva de cronograma sin Recursos - RF-01 y RF-03 | 3d | 2026-11-16 | 2026-11-18 | 68 | 52d |  |
| 70 | 1.2.2.2 | **RF-06 especificado y diseñado (E)** | 7.71d | 2026-11-09 | 2026-11-18 |  | 36.96d |  |

| ID | WBS | Task | Duration | Start | Finish | Predecessors | Total float | Constraint |
| --- | --- | --- | --- | --- | --- | --- | --- | --- |
| 71 |  | Equipos y conexión de las tiendas disponibles para usar el panel | 0d | 2026-11-09 | 2026-11-09 | 13 | 60d |  |
| 72 |  | RF-06 especificado | 2.14d | 2026-11-12 | 2026-11-16 | 49 | 33.96d |  |
| 73 |  | RF-06 diseñado | 0.57d | 2026-11-16 | 2026-11-16 | 72 | 33.96d |  |
| 74 |  | [Tarea Colchón] Reserva de cronograma sin Recursos - RF-06 | 2d | 2026-11-16 | 2026-11-18 | 73 | 52.29d |  |
| 75 | 1.2.2.3 | **Entornos de desarrollo y CI/CD operativos (EP-03)** | 2d | 2026-11-19 | 2026-11-20 |  | 50d |  |
| 76 |  | Entornos de desarrollo operativos (EP-03) | 2d | 2026-11-19 | 2026-11-20 | 60 | 50d |  |
| 77 |  | CI/CD operativos (EP-03) | 2d | 2026-11-19 | 2026-11-20 | 60 | 50d |  |
| 78 | 1.2.3 | **Sprint 2** | 7.42d | 2026-11-23 | 2026-12-02 |  | 26.95d |  |
| 79 | 1.2.3.1 | **RF-01 y RF-03 construidos e integrados (C)** | 5d | 2026-11-23 | 2026-11-27 |  | 42.24d |  |
| 80 |  | RF-01 construido | 3.63d | 2026-11-23 | 2026-11-26 | 17, 66 | 42.52d |  |
| 81 |  | RF-01 integrado | 1.09d | 2026-11-26 | 2026-11-27 | 80 | 42.52d |  |
| 82 |  | RF-03 construido | 4.5d | 2026-11-23 | 2026-11-27 | 17, 68 | 42.24d |  |
| 83 |  | RF-03 integrado | 0.5d | 2026-11-27 | 2026-11-27 | 82 | 42.24d |  |
| 84 | 1.2.3.2 | **RF-02 y RF-04 especificados y diseñados (E)** | 3.5d | 2026-11-23 | 2026-11-26 |  | 35.15d |  |
| 85 |  | RF-02 especificado | 1.81d | 2026-11-23 | 2026-11-24 | 17 | 35.15d |  |
| 86 |  | RF-02 diseñado | 0.72d | 2026-11-24 | 2026-11-25 | 85 | 35.15d |  |
| 87 |  | RF-04 especificado | 2.5d | 2026-11-23 | 2026-11-25 | 17 | 38d |  |
| 88 |  | RF-04 diseñado | 1d | 2026-11-25 | 2026-11-26 | 87 | 38d |  |
| 89 | 1.2.3.3 | **RF-06 construido e integrado (C)** | 7.42d | 2026-11-23 | 2026-12-02 |  | 29.67d |  |
| 90 |  | RF-06 construido | 5.14d | 2026-11-23 | 2026-11-30 | 73, 12 | 29.67d |  |
| 91 |  | RF-06 integrado | 2.28d | 2026-11-30 | 2026-12-02 | 90 | 29.67d |  |
| 92 | 1.2.3.4 | **RF-05 y RF-07 especificados y diseñados (E)** | 2.14d | 2026-11-23 | 2026-11-25 |  | 26.95d |  |
| 93 |  | Recepción de Franjas y Repartidores | 0d | 2026-11-23 | 2026-11-23 | 52 | 26.95d | start no earlier than 2026-11-23 |
| 94 |  | RF-05 especificado | 1.07d | 2026-11-23 | 2026-11-24 | 93, 17 | 26.95d |  |
| 95 |  | RF-05 diseñado | 1.07d | 2026-11-24 | 2026-11-25 | 94 | 26.95d |  |
| 96 |  | RF-07 especificado | 1.14d | 2026-11-23 | 2026-11-24 | 17 | 27.38d |  |
| 97 |  | RF-07 diseñado | 0.57d | 2026-11-24 | 2026-11-24 | 96 | 27.38d |  |
| 98 | 1.2.4 | **Sprint 3** | 16d | 2026-12-07 | 2027-01-08 |  | 15.5d |  |
| 99 | 1.2.4.1 | **RF-01 verificado (V)** | 16d | 2026-12-07 | 2027-01-08 |  | 24d |  |
| 100 |  | Ejecución de las pruebas de verificación del requisito funcional RF-01 | 1d | 2026-12-07 | 2026-12-07 | 22, 81, 83 | 37.24d |  |
| 101 |  | Verificación del requisito funcional RF-01 completada (V) | 0.63d | 2026-12-09 | 2026-12-09 | 100 | 37.24d |  |
| 102 |  | dentificación del comprador (RF-01.2) | 0d | 2026-12-09 | 2026-12-09 | 101 | 38.37d |  |
| 103 |  | ACE-RF-01 · Aceptación formal de RF-01 | 0d | 2027-01-08 | 2027-01-08 |  | 24d | finish no earlier than 2027-01-08 |
| 104 | 1.2.4.2 | **RF-04 construido e integrado (C)** | 9d | 2026-12-07 | 2026-12-18 |  | 31d |  |
| 105 |  | RF-04 construido | 3.5d | 2026-12-07 | 2026-12-11 | 22, 88 | 31.5d |  |
| 106 |  | RF-04 integrado | 1d | 2026-12-11 | 2026-12-14 | 105 | 31.5d |  |
| 107 |  | RF-04 pasarela de pago construida | 0d | 2026-12-17 | 2026-12-17 | 106 | 32d | start no earlier than 2026-12-17 |
| 108 |  | Solicitud de auditoria a TuSuper | 1d | 2026-12-18 | 2026-12-18 | 107 | 31d | start no earlier than 2026-12-18 |
| 109 | 1.2.4.3 | **RF-05 construido e integrado (C)** | 7.43d | 2026-12-07 | 2026-12-17 |  | 19.09d |  |
| 110 |  | RF-05 construido | 4.57d | 2026-12-07 | 2026-12-14 | 95, 22, 97 | 19.09d |  |
| 111 |  | RF-05 integrado | 2.86d | 2026-12-14 | 2026-12-17 | 110 | 19.09d |  |
| 112 | 1.2.4.4 | **RF-08 especificado y diseñado (E)** | 2.71d | 2026-12-07 | 2026-12-10 |  | 26.66d |  |
| 113 |  | RF-08 especificado | 2.14d | 2026-12-07 | 2026-12-10 | 22 | 26.66d |  |
| 114 |  | RF-08 diseñado | 0.57d | 2026-12-10 | 2026-12-10 | 113 | 26.66d |  |
| 115 | 1.2.4.5 | **Plan y escenarios de pruebas de sistema preparados (EP-05)** | 11d | 2026-12-07 | 2026-12-22 |  | 15.5d |  |
| 116 |  | Entorno de verificación de TuSuper y cargas de datos disponibles | 0d | 2026-12-22 | 2026-12-22 | 10, 170 | 29d | start no earlier than 2026-12-18 |
| 117 |  | Plan de pruebas de sistema preparados (EP-05) | 6d | 2026-12-07 | 2026-12-15 | 22 | 15.5d |  |
| 118 |  | Escenarios de pruebas de sistema preparados (EP-05) | 1d | 2026-12-16 | 2026-12-16 | 117 | 15.5d |  |
| 119 | 1.2.5 | **Sprint 4** | 7d | 2026-12-21 | 2027-01-08 |  | 17.52d |  |
| 120 | 1.2.5.1 | **RF-03 verificado (V)** | 7d | 2026-12-21 | 2027-01-08 |  | 24d |  |
| 121 |  | RF-03 verificado (V) | 0.63d | 2026-12-21 | 2026-12-21 | 26, 83, 101 | 29.87d |  |
| 122 |  | RF-03.4 Persistencia Sesión verificada (V) | 0.5d | 2026-12-21 | 2026-12-22 | 121 | 29.87d |  |
| 123 |  | ACE-RF-03 · Aceptación formal de RF-03 | 0d | 2027-01-08 | 2027-01-08 |  | 24d | finish no earlier than 2027-01-08 |
| 124 | 1.2.5.2 | **RF-02 construido e integrado (C)** | 6.57d | 2026-12-21 | 2027-01-08 |  | 18.68d |  |
| 125 |  | RF-02 construido | 4.36d | 2026-12-21 | 2027-01-05 | 26, 86 | 18.68d |  |
| 126 |  | RF-02 integrado | 2.21d | 2027-01-05 | 2027-01-08 | 125 | 18.68d |  |
| 127 | 1.2.5.3 | **RF-05 y RF-06 verificados (V)** | 5d | 2026-12-23 | 2027-01-08 |  | 15.52d |  |
| 128 |  | RF-05 verificado | 2.85d | 2026-12-23 | 2027-01-05 | 26, 170, 111 | 15.52d |  |
| 129 |  | RF-06 verificado | 2.28d | 2026-12-23 | 2027-01-05 | 26, 170, 91 | 16.09d |  |
| 130 |  | ACE-RF-05 · Aceptación formal de RF-05 | 0d | 2027-01-08 | 2027-01-08 |  | 24d | finish no earlier than 2027-01-08 |
| 131 |  | ACE-RF-06 · Aceptación formal de RF-06 | 0d | 2027-01-08 | 2027-01-08 |  | 25d | start no earlier than 2027-01-08 |
| 132 | 1.2.6 | **Sprint 5** | 19d | 2027-01-11 | 2027-02-05 |  | 5d |  |
| 133 | 1.2.6.1 | **RF-02 y RF-04 verificados (V)** | 19d | 2027-01-11 | 2027-02-05 | 31 | 5d |  |
| 134 |  | RF-02 verificado | 1.75d | 2027-01-11 | 2027-01-12 | 126 | 18.25d |  |
| 135 |  | RF-02.6 Datos de ERP por tienda verificado (V) | 0d | 2027-01-12 | 2027-01-12 | 134 | 18.25d |  |
| 136 |  | RF-04 Recepción de Credenciales de la pasarela | 0d | 2027-01-13 | 2027-01-13 | 89, 135 | 18d | start no earlier than 2027-01-13 |
| 137 |  | RF-04 verificado | 2.5d | 2027-01-13 | 2027-01-15 | 31, 169, 136, 106, 114, 126 | 18d |  |
| 138 |  | ACE-RF-02 · Aceptación formal de RF-02 | 0d | 2027-02-05 | 2027-02-05 |  | 5d | start no earlier than 2027-02-05 |
| 139 |  | ACE-RF-04 · Aceptación formal de RF-04 | 0d | 2027-02-05 | 2027-02-05 |  | 5d | start no earlier than 2027-02-05 |
| 140 | 1.2.6.2 | **RF-07 y RF-08 construidos e integrados (C)** | 6.85d | 2027-01-11 | 2027-01-19 |  | 13.37d |  |

| ID | WBS | Task | Duration | Start | Finish | Predecessors | Total float | Constraint |
| --- | --- | --- | --- | --- | --- | --- | --- | --- |
| 141 |  | RF-07 construido | 4.57d | 2027-01-11 | 2027-01-15 | 95, 31, 128, 97, 129 | 15.65d |  |
| 142 |  | RF-07 integrado | 0.57d | 2027-01-15 | 2027-01-18 | 141 | 15.65d |  |
| 143 |  | RF-08 construido | 5.14d | 2027-01-11 | 2027-01-18 | 95, 31, 128, 114, 129 | 13.37d |  |
| 144 |  | RF-08 integrado | 1.71d | 2027-01-18 | 2027-01-19 | 143 | 13.37d |  |
| 145 | 1.2.6.3 | **Pruebas de sistema, carga y seguridad ejecutadas (EP-05)** | 6d | 2027-01-11 | 2027-01-18 |  | 6.5d |  |
| 146 |  | Pruebas de sistema ejecutadas (EP-05) | 3d | 2027-01-11 | 2027-01-13 | 31, 118 | 6.5d |  |
| 147 |  | Pruebas de carga y seguridad ejecutadas (EP-05) | 3d | 2027-01-14 | 2027-01-18 | 31, 146, 118 | 6.5d |  |
| 148 | 1.2.6.4 | **Seguimiento técnico del piloto: primer tramo completado (EP-05)** | 4d | 2027-01-19 | 2027-01-22 |  | 6.5d |  |
| 149 |  | Realización del seguimiento técnico del piloto durante el primer tramo (EP-05) | 3d | 2027-01-19 | 2027-01-21 | 31, 147 | 6.5d |  |
| 150 |  | Primer tramo del seguimiento técnico del piloto completado (EP-05) | 1d | 2027-01-22 | 2027-01-22 | 31, 149, 147 | 6.5d |  |
| 151 | 1.2.7 | **Sprint 6** | 10d | 2027-01-25 | 2027-02-05 |  | 4d |  |
| 152 | 1.2.7.1 | **RF-07 y RF-08 verificados (V)** | 10d | 2027-01-25 | 2027-02-05 |  | 4d |  |
| 153 |  | RF-07 verificado | 1.71d | 2027-01-25 | 2027-01-26 | 35, 128, 170, 142, 129 | 10.79d |  |
| 154 |  | RF-08 verificado | 2.28d | 2027-01-25 | 2027-01-27 | 35, 128, 170, 144, 129 | 10.22d |  |
| 155 |  | ACE-RF-07 · Aceptación formal de RF-07 | 0d | 2027-02-05 | 2027-02-05 |  | 4d | finish no earlier than 2027-02-05 |
| 156 |  | ACE-RF-08 · Aceptación formal de RF-08 | 0d | 2027-02-05 | 2027-02-05 |  | 5d | start no earlier than 2027-02-05 |
| 157 | 1.2.7.2 | **Seguimiento técnico y evidencias finales del piloto completadas (EP-05)** | 6d | 2027-01-25 | 2027-02-01 |  | 6.5d |  |
| 158 |  | Seguimiento técnico del piloto (EP-05) | 5d | 2027-01-25 | 2027-01-29 | 35, 150 | 6.5d |  |
| 159 |  | Evidencias finales del piloto completadas (EP-05) | 1d | 2027-02-01 | 2027-02-01 | 158 | 6.5d |  |
| 160 | 1.3 | **Integración con ERP · ENT-02** | 38d | 2026-11-09 | 2027-01-12 |  | 22d |  |
| 161 | 1.3.1 | **Sprint 1 · Especificación de interfaz ERP acordada (EP-04)** | 3d | 2026-11-09 | 2026-11-11 |  | 29.52d |  |
| 162 |  | Solcitud de Acceso a los datos del ERP | 0d | 2026-11-09 | 2026-11-09 | 10 | 29.52d | start no earlier than 2026-11-09 |
| 163 |  | Gestión Solcitud de Acceso a los datos del ERP | 1d | 2026-11-09 | 2026-11-09 | 162 | 29.52d |  |
| 164 |  | Sprint 1 · Especificación de interfaz ERP acordada (EP-04) | 2d | 2026-11-10 | 2026-11-11 | 13, 162, 163 | 29.52d |  |
| 165 | 1.3.2 | **Sprint 2 · Adaptación propia y ensayos con datos simulados (EP-04)** | 5d | 2026-11-23 | 2026-11-27 |  | 22.52d |  |
| 166 |  | Sprint 2 · Adaptación propia (EP-04) | 4d | 2026-11-23 | 2026-11-26 | 17, 164 | 22.52d |  |
| 167 |  | Sprint 2 · Ensayos con datos simulados (EP-04) | 1d | 2026-11-27 | 2026-11-27 | 166 | 22.52d |  |
| 168 | 1.3.3 | **Sprint 3 · Conector integrado, carga inicial y pruebas reales completadas (EP-04)** | 9d | 2026-12-10 | 2026-12-22 |  | 15.52d |  |
| 169 |  | Sprint 3 · Conector integrado, carga inicial y pruebas reales completadas (EP-04) | 5d | 2026-12-10 | 2026-12-16 | 22, 219, 167 | 15.52d |  |
| 170 |  | Catálogo, precios y existencias del ERP, cargados y existencias del ERP, cargados y sincronizados (EP-04), con el conector y ERP funcionando | 4d | 2026-12-17 | 2026-12-22 | 169, 219 | 15.52d |  |
| 171 |  | Aceptación del Conector | 0d | 2026-12-22 | 2026-12-22 | 169, 219, 170 | 22d | start no earlier than 2026-12-09 |
| 172 | 1.3.4 | **Sprint 4 · Sincronización comprobada y carga productiva de 32 tiendas (EP-04)** | 7d | 2026-12-23 | 2027-01-12 |  | 22d |  |
| 173 |  | Sprint 4 · Sincronización comprobada (EP-04) | 2d | 2026-12-23 | 2027-01-04 | 26, 171 | 22d |  |
| 174 |  | Sprint 4 · Carga productiva de 32 tiendas (EP-04) | 5d | 2027-01-05 | 2027-01-12 | 173 | 22d |  |
| 175 | 1.4 | **Puesta en producción · ENT-03** | 45d | 2026-11-23 | 2027-02-05 |  | 5d |  |
| 176 | 1.4.1 | **Sprint 2 · Entorno de preproducción preparado (EP-06)** | 10d | 2026-11-23 | 2026-12-04 |  | 38.5d |  |
| 177 |  | Solicitud de cuentas de desarrollo (app móviles) | 0d | 2026-12-04 | 2026-12-04 | 10 | 29.5d | start no earlier than 2026-12-04 |
| 178 |  | Gestión de la Solicitud de cuentas de desarrollo | 1d | 2026-12-04 | 2026-12-04 | 17, 177 | 40d |  |
| 179 |  | Sprint 2 · Entorno de preproducción preparado (EP-06) | 5d | 2026-11-23 | 2026-11-27 | 17 | 43d |  |
| 180 |  | Entorno de preproducción construido | 0d | 2026-12-04 | 2026-12-04 | 179 | 41d | start no earlier than 2026-12-04 |
| 181 | 1.4.2 | **Sprint 4 · Despliegue de la plataforma en tres tiendas piloto (EP-06)** | 7d | 2026-12-21 | 2027-01-08 |  | 19.5d |  |
| 182 |  | Sprint 4 · Preparación y planificación del despliegue de la plataforma en las tres tiendas piloto (EP-06) | 2d | 2026-12-21 | 2026-12-22 | 22, 183, 179 | 29d |  |
| 183 |  | Cuentas de desarrollo disponibles (app móviles) | 0d | 2026-12-21 | 2026-12-21 | 22, 177 | 19.5d | start no earlier than 2026-12-21 |
| 184 |  | Publicación de app móviles | 0d | 2027-01-07 | 2027-01-07 | 177, 183 | 14.5d | start no earlier than 2027-01-07 |
| 185 |  | Sprint 4 · Despliegue de la plataforma en las tres tiendas piloto completado (EP-06) | 2d | 2027-01-07 | 2027-01-08 | 184 | 14.5d |  |
| 186 | 1.4.3 | **Sprint 5 · Piloto operativo y supervisado: primer tramo (EP-06)** | 9.5d | 2027-01-12 | 2027-01-25 |  | 13.5d |  |
| 187 |  | Sprint 5 · Piloto operativo primer tramo (EP-06) | 0.5d | 2027-01-12 | 2027-01-12 | 31, 185 | 13.5d | start no earlier than 2027-01-12 |
| 188 |  | Sprint 5 · Piloto supervisado: primer tramo (EP-06) | 1d | 2027-01-12 | 2027-01-13 | 187 | 13.5d |  |
| 189 |  | [Tarea Colchón] Reserva de cronograma sin Recursos - EP-06 | 8d | 2027-01-13 | 2027-01-25 | 188 | 13.5d |  |
| 190 | 1.4.4 | **Sprint 6 · 25/01–05/02/2027** | 9d | 2027-01-25 | 2027-02-05 |  | 5d |  |
| 191 | 1.4.4.1 | **Piloto operativo finalizado: segundo tramo (EP-06)** | 9d | 2027-01-25 | 2027-02-05 |  | 5d |  |
| 192 |  | Ejecución del segundo tramo del piloto operativo (EP-06) | 0.5d | 2027-01-25 | 2027-01-25 | 35, 188 | 11d |  |
| 193 |  | Segundo tramo del piloto operativo finalizado (EP-06) | 1d | 2027-01-25 | 2027-01-26 | 192 | 11d |  |
| 194 |  | ACE-PILOTO · Aceptación del piloto comercial (CA-03) | 0d | 2027-02-05 | 2027-02-05 |  | 5d | start no earlier than 2027-02-05 |
| 195 | 1.4.4.2 | **Despliegue en producción y apertura de las 32 tiendas (EP-06)** | 1.5d | 2027-02-03 | 2027-02-04 | 171, 135, 137, 153, 154, 159 | 5.5d |  |
| 196 |  | Despliegue en producción y apertura de las 32 tiendas (EP-06) | 1d | 2027-02-03 | 2027-02-03 | 193 | 5.5d | start no earlier than 2027-02-03 |
| 197 |  | Despliegue en producción y apertura de las 32 tiendas completados (EP-06) | 0.5d | 2027-02-04 | 2027-02-04 | 196 | 5.5d |  |
| 198 | 1.5 | **Documentación y formación · ENT-04** | 24.5d | 2026-12-04 | 2027-01-21 |  | 15.5d |  |
| 199 | 1.5.1 | **Sprint 3 · Acceso Preproducción y Documentación técnica y funcional entregada a Formación (EP-07)** | 9d | 2026-12-07 | 2026-12-18 |  | 25.5d |  |
| 200 |  | Solicitud de las listas del personal a formar | 0.5d | 2026-12-07 | 2026-12-07 | 22 | 38d | start no earlier than 2026-12-04 |
| 201 |  | Gestión de la Solicitud de formación TSL-2627-DF-OFE-01 | 0.5d | 2026-12-07 | 2026-12-07 | 200 | 38d |  |
| 202 |  | Gestión de la Solicitud de las listas del personal a formar | 1d | 2026-12-09 | 2026-12-09 | 201 | 38d |  |
| 203 |  | Sprint 3 · Documentación técnica y funcional entregada a Formación (EP-07) | 5d | 2026-12-07 | 2026-12-14 | 22 | 25.5d |  |
| 204 |  | Sprint 3 · Acceso a preproducción habilitado para Formación (EP-07) | 0d | 2026-12-14 | 2026-12-14 | 203, 22 | 25.5d |  |
| 205 |  | [Tarea Colchón] Reserva de cronograma sin Recursos - EP-07 | 4d | 2026-12-15 | 2026-12-18 | 204 | 31d |  |
| 206 | 1.5.2 | **Sprint 5 · Formación (EP-07)** | 24.5d | 2026-12-04 | 2027-01-21 |  | 15.5d |  |
| 207 |  | Recepción de la lista del personal a formar | 0d | 2027-01-08 | 2027-01-08 | 204 | 15.5d | start no earlier than 2027-01-08 |
| 208 |  | Personal de las tiendas piloto puesto a disposición por TuSuper | 0d | 2027-01-08 | 2027-01-08 | 207 | 25d |  |
| 209 |  | Planificación y preparación de la formación del personal | 0.5d | 2027-01-08 | 2027-01-08 | 207, 224 | 15.5d | start no earlier than 2027-01-08 |
| 210 |  | Formación del personal realizada y completada | 1d | 2027-01-08 | 2027-01-11 | 209 | 15.5d |  |

| ID | WBS | Task | Duration | Start | Finish | Predecessors | Complete | Total float | Constraint |
| --- | --- | --- | --- | --- | --- | --- | --- | --- | --- |
| 211 |  | [Tarea Colchón] Reserva de cronograma sin Recursos - EP-07 | 8d | 2027-01-11 | 2027-01-21 | 210 |  | 15.5d |  |
| 212 |  | Solicitud de las listas del personal a formar | 0d | 2026-12-04 | 2026-12-04 |  |  | 40d | finish no earlier than 2026-12-04 |
| 213 | 1.6 | **Adquisiciones** | 29d | 2026-11-06 A | 2026-12-18 |  | 22% | 32d |  |
| 214 | 1.6.1 | **Contrato del conector con ERP: pedido, seguimiento y aceptación** | 28d | 2026-11-09 A | 2026-12-18 |  | 33% | 32d |  |
| 215 |  | Pedido del conector ERP | 0d | 2026-11-09 | 2026-11-09 | 10 |  | 58d | start no earlier than 2026-11-09 |
| 216 |  | Tramitación del Pedido del conector ERP tramitado | 1d | 2026-11-09 | 2026-11-09 | 215 |  | 58d |  |
| 217 |  | Primer pago (40%) ERP | 0d | 2026-11-09 | 2026-11-09 | 216 |  | 58d | start no earlier than 2026-11-09 |
| 218 |  | Seguimiento del proveedor del conector | 1d | 2026-11-10 | 2026-11-10 | 217 |  | 58d |  |
| 219 |  | Conector recibido y aceptado formalmente | 1d | 2026-12-09 A | 2026-12-09 A | 218 | 100% |  |  |
| 220 |  | Segundo pago (60%) con Retención 10% ERP | 0d | 2026-12-18 | 2026-12-18 | 219 |  | 32d | start no earlier than 2026-12-18 |
| 221 | 1.6.2 | **Encargo de documentación de uso y formación: seguimiento y aceptación** | 24d | 2026-11-06 | 2026-12-11 |  |  | 37d |  |
| 222 |  | Encargo y elaboración de documentación | 0.5d | 2026-11-06 | 2026-11-06 | 10 |  | 51d |  |
| 223 |  | Encargo de documentación | 0d | 2026-11-06 | 2026-11-06 | 222 |  | 51d | start no earlier than 2026-11-06 |
| 224 |  | Documentación entregada y acceso a preproducción habilitado para Formación | 0d | 2026-12-11 | 2026-12-11 | 223 |  | 27.5d | start no earlier than 2026-12-11 |
| 225 |  | Realización de la formación | 1d | 2026-11-09 | 2026-11-09 | 222 |  | 59d | start no earlier than 2026-11-09 |

## Version 2 (saved 2026-11-15)

Note of the change: Lista de actividades definitiva

Last finish stays 2027-02-12.

Changed:

| ID | Task | Other |
| --- | --- | --- |
| 102 | Dentificación del comprador (RF-01.2) | was named dentificación del comprador (RF-01.2) |
| 163 | Gestión Solicitud de Acceso a los datos del ERP | was named Gestión Solcitud de Acceso a los datos del ERP |
| 170 | Catálogo, precios y existencias del ERP, cargados y sincronizados (EP-04), con el conector y ERP funcionando | was named Catálogo, precios y existencias del ERP, cargados y existencias del ERP, cargados y sincronizados (EP-04), con el conector y ERP funcionando |

## Version 3 (saved 2026-11-15)

Note of the change: Merge branch 'main' of https://github.com/CarlosVP05/PGPI-208

Last finish stays 2027-02-12.

Changed:

| ID | Task | Finish | Duration | Total float | Other |
| --- | --- | --- | --- | --- | --- |
| 4 | Comienzo del Proyecto |  |  |  | resources Jefe de proyecto - 2026 [25%]; Analista funcional [25%]; Arquitecto de software-2026 [25%]; Desarrollador [25%]; Diseñador UX [25%]; Ténico de calidad [25%]; Técnico de sistemas [25%] → Jefe de proyecto - 2026 [25%]; Diseñador UX [25%]; Ténico de calidad [25%]; Técnico de sistemas [25%] |
| 129 | RF-06 verificado |  |  |  | resources Desarrollador - 2027; Desarrollador Junior - 2026 [75%] → Desarrollador Junior - 2026 [75%]; Desarrollador - 2026 |
| 141 | RF-07 construido |  |  | 15.65d → 15.08d | resources Desarrollador - 2027; Desarrollador Junior - 2026 [75%] → Desarrollador - 2027; Desarrollador Junior - 2027 [75%] |
| 142 | RF-07 integrado |  |  | 15.65d → 15.08d | resources Desarrollador - 2027; Desarrollador Junior - 2026 [75%] → Desarrollador - 2027; Desarrollador Junior - 2027 [75%] |
| 143 | RF-08 construido |  |  |  | resources Desarrollador - 2027; Desarrollador Junior - 2026 [75%] → Desarrollador - 2027; Desarrollador Junior - 2027 [75%] |
| 144 | RF-08 integrado |  |  |  | resources Desarrollador - 2027; Desarrollador Junior - 2026 [75%] → Desarrollador - 2027; Desarrollador Junior - 2027 [75%] |
| 153 | RF-07 verificado | 2027-01-26 → 2027-01-27 (+1d) | 1.71d → 2.28d | 10.79d → 10.22d | resources Desarrollador - 2027; Desarrollador Junior - 2026 [75%] → Desarrollador - 2027; Desarrollador Junior - 2027 [75%] |
| 154 | RF-08 verificado |  |  |  | resources Desarrollador - 2027; Desarrollador Junior - 2026 [75%] → Desarrollador - 2027; Desarrollador Junior - 2027 [75%] |
| 174 | Sprint 4 · Carga productiva de 32 tiendas (EP-04) |  |  |  | resources Desarrollador - 2026 → Desarrollador - 2027 |
| 185 | Sprint 4 · Despliegue de la plataforma en las tres tiendas piloto completado (EP-06) |  |  |  | resources Desarrollador - 2026 → Desarrollador - 2027 |
